# 50 — Audience and broadcast
#
# The read-only audience surface — rendered for video, served as an OBS
# browser source for live shows. The "this is the show" surface.
#
# i18n note
# ---------
# All user-facing strings in this surface land via the i18n catalog
# substrate built by `frontend_i18n` (see tasks/35-frontend-i18n.tji
# and docs/adr/0024-frontend-i18n-react-i18next-with-icu.md). Three
# refinements under tasks/refinements/frontend-i18n/ are load-bearing:
#   - i18n_catalog_workflow.md
#   - i18n_methodology_glossary.md       — for node + edge labels
#   - i18n_diagnostic_descriptions.md    — for diagnostic-fire captions
# Audience locale is URL-prefix-driven (per i18n_locale_negotiation.md):
# `/{locale}/sessions/{id}` lets the producer choose the locale via the
# URL pointed at OBS. Diacritic + typography validation is owned by
# i18n_audience_typography.md, which gates on aud_clean_typography.

task audience "Audience and broadcast" {
  # Every audience-UI leaf inherits this dependency. Public-session
  # paths are unauthenticated by design (see `aud_no_auth_for_public`),
  # but the private-session path goes through the same OIDC handshake
  # the moderator + participant surfaces do — and the broadcast
  # surface itself sits behind the same auth layer until a session is
  # promoted to public. `auth_flow_integration` is the canonical home
  # for the end-to-end OIDC handshake tests; nothing in this stream
  # should ship without that safety net.
  depends backend.backend_tests.be_e2e_tests.auth_flow_integration
  task aud_shell "Audience app shell" {
    depends foundation.repo_skeleton, foundation.stack_decisions.frontend_framework_decision
    task aud_app_skeleton "Audience surface as a mountable library (entry, build, mount() export)" {
      effort 1d
      allocate team
      complete 100
      depends shell_package.shell_mount_contract, frontend_i18n.i18n_locale_negotiation
      note -8<-
        Refinement: tasks/refinements/audience/aud_app_skeleton.md

        Reshaped under ADR 0026: audience builds as a Vite-library bundle exporting mount(props): UnmountFn; no own index.html or DOM bootstrap. i18n now bootstraps in @aconversa/shell and is passed in via MountProps (locale negotiation still uses the URL prefix per i18n_locale_negotiation.md; the audience surface reads its locale from the URL and configures the shared i18n instance accordingly).

        Locale comes from URL prefix per i18n_locale_negotiation.md; under ADR 0026 the per-session prefix becomes /a/sessions/:id, with the locale segment handled inside the audience surface's basename-scoped routes.
      ->8-
    }
    task aud_ws_client "Wire audience surface to shell's WS client (read-only subscription)" {
      effort 0.5d
      allocate team
      complete 100
      depends !aud_app_skeleton, shell_package.shell_substrate_extraction, backend.websocket_protocol.ws_subscribe_to_session
      note "Reshaped under ADR 0026: the underlying WS client implementation lives in @aconversa/shell. This leaf wires the audience surface's read-only subscription path to the shared client (was: re-implementing the WS client inside the audience workspace, 1d)."
    }
    task aud_state_management "State management for live event stream" {
      effort 1d
      allocate team
      complete 100
      depends !aud_ws_client
    }
    task aud_no_auth_for_public "No auth for public-session viewer page" {
      effort 0.5d
      allocate team
      complete 100
      depends !aud_app_skeleton
      note -8<-
        Public sessions render to anyone with the URL; private sessions auth-gate.

        Refinement: tasks/refinements/audience/aud_no_auth_for_public.md
      ->8-
    }
    task aud_anonymous_ws_subscribe "Server-side anonymous WS subscribe with per-session privacy enforcement" {
      effort 0.5d
      allocate team
      complete 100
      depends !aud_no_auth_for_public, backend.websocket_protocol.ws_subscribe_to_session
      note "Server-side anonymous WS subscribe with per-session privacy enforcement. Audience surface for anonymous visitors mounts the placeholder but `<WsClientProvider>` short-circuits without opening a socket until this leaf lands (the cookie-on-upgrade gate at `apps/server/src/ws/connection.ts:86-104` requires an authenticated session today). Source: tasks/refinements/audience/aud_no_auth_for_public.md (Decision §9) + this commit."
    }
    task aud_auth_for_private "Wire audience surface to shell's AuthContext for private sessions" {
      effort 0.5d
      allocate team
      complete 100
      depends !aud_no_auth_for_public, shell_package.shell_substrate_extraction
      note "Reshaped under ADR 0026: the OAuth callback handling, login/logout, and screen-name capture all live in apps/root/ + @aconversa/shell. The audience surface only consumes useAuth() from shell to auth-gate private-session viewer pages; the auth UX itself is the root's responsibility."
    }
  }

  task aud_graph_rendering "Audience graph rendering (Cytoscape.js)" {
    depends !aud_shell, foundation.stack_decisions.graph_lib_decision
    task aud_cytoscape_init "Initialize Cytoscape.js viewport" {
      effort 1d
      allocate team
      complete 100
      note -8<-
        Refinement: tasks/refinements/audience/aud_cytoscape_init.md

        Ships <AudienceGraphView> (Cytoscape.js mount, breadthfirst layout, dangling-edge filter,
        position cache, cyRef callback seam), pure projectGraph() projection, and duplicated
        cytoscapeTestEnv helper. 26 Vitest cases (10 projection + 12 GraphView + 4 cytoscapeTestEnv).
        App.tsx and route table unchanged; Playwright deferred to aud_session_url (Decision §9).
      ->8-
    }
    task aud_clean_typography "Clean typography for video legibility" {
      effort 1d
      allocate team
      depends !aud_cytoscape_init
    }
    task aud_proposed_styling "Proposed-state styling (dashed, faded)" {
      effort 1d
      allocate team
      depends !aud_cytoscape_init
    }
    task aud_agreed_styling "Agreed-state styling (solid, full color)" {
      effort 0.5d
      allocate team
      depends !aud_cytoscape_init
    }
    task aud_disputed_styling "Disputed-state styling" {
      effort 1d
      allocate team
      depends !aud_cytoscape_init
    }
    task aud_meta_disagreement_split "Meta-disagreement split rendering" {
      effort 1d
      allocate team
      depends !aud_cytoscape_init
    }
    task aud_axiom_mark_decoration "Per-participant axiom-mark decoration" {
      effort 1d
      allocate team
      depends !aud_cytoscape_init
    }
    task aud_annotation_rendering "Annotation rendering" {
      effort 1d
      allocate team
      depends !aud_cytoscape_init
    }
    task aud_per_facet_visualization "Per-facet state visualization within a single node" {
      effort 2d
      allocate team
      depends !aud_proposed_styling, !aud_agreed_styling, !aud_disputed_styling
    }
    task aud_layout_engine "Configure layout algorithm tuned for clarity on video" {
      effort 2d
      allocate team
      depends !aud_cytoscape_init
    }
  }

  task aud_animations "Animations on commit and graph changes" {
    depends !aud_graph_rendering
    task aud_node_appear_animation "Animate node appearing on creation" {
      effort 1d
      allocate team
    }
    task aud_proposed_to_agreed_animation "Animate proposed → agreed transition" {
      effort 1d
      allocate team
    }
    task aud_decomposition_animation "Animate decomposition (parent fading, components emerging)" {
      effort 2d
      allocate team
    }
    task aud_withdrawal_animation "Animate withdrawal (agreed → disputed)" {
      effort 1d
      allocate team
    }
    task aud_diagnostic_fire_animation "Animate diagnostic firing (cycle / contradiction highlight)" {
      effort 1d
      allocate team
    }
    task aud_axiom_mark_animation "Animate axiom-mark landing on a node" {
      effort 0.5d
      allocate team
    }
    task aud_animation_pacing "Pacing tuning so animations are readable on video" {
      effort 1d
      allocate team
      depends !aud_node_appear_animation, !aud_proposed_to_agreed_animation
    }
  }

  task aud_obs_integration "OBS browser-source considerations" {
    depends !aud_shell
    task aud_obs_sizing_defaults "Default sizing for typical OBS browser-source dimensions" {
      effort 0.5d
      allocate team
    }
    task aud_obs_transparency "Background transparency for compositing" {
      effort 0.5d
      allocate team
      depends !aud_obs_sizing_defaults
    }
    task aud_obs_no_input_required "Ensure no user input is required for OBS rendering" {
      effort 0.25d
      allocate team
    }
    task aud_obs_setup_docs "OBS setup guide for show producers" {
      effort 1d
      allocate team
      depends !aud_obs_sizing_defaults, !aud_obs_transparency
    }
  }

  task aud_segment_markers "Segment snapshot rendering" {
    depends !aud_graph_rendering, data_and_methodology.event_types.snapshot_events
    task aud_chapter_marker_render "Render segment snapshot as a visible chapter marker" {
      effort 1d
      allocate team
    }
    task aud_segment_break_animation "Optional: brief animation cue at segment break" {
      effort 1d
      allocate team
      depends !aud_chapter_marker_render
    }
  }

  task aud_url_routing "Stable URL routing" {
    depends !aud_shell
    task aud_session_url "Stable URL per session" {
      effort 1d
      allocate team
      note -8<-
        Refinement: tasks/refinements/audience/aud_session_url.md (to be authored)

        Inherits cumulative four-leaf deferred-e2e debt per aud_cytoscape_init Decision §9:
          1. From aud_ws_client Decision §10: authenticated visitor's event-applied broadcast
             arrives and renders a visible affordance.
          2. From aud_state_management Decision §7: live projection from real broadcast events
             produces nodes/edges visible to a Playwright assertion.
          3. From aud_anonymous_ws_subscribe: anonymous visitor sees a node-created arrive via
             the anonymous-WS-upgrade path.
          4. From aud_cytoscape_init: Cytoscape canvas mounts on /sessions/:id,
             audience-graph-root testid is visible, seeded node-created lands as a visible
             Cytoscape element (assert via WS-store events slice + canvas presence, NOT DOM text).
        All four scenarios must be scoped in this task's refinement and covered by one
        cumulative Playwright spec. Source: tasks/refinements/audience/aud_cytoscape_init.md §9.
      ->8-
    }
    task aud_url_position_param "URL parameter for log position (for replay deep-linking)" {
      effort 1d
      allocate team
      depends !aud_session_url
    }
  }

  task aud_tests "Audience surface tests" {
    depends !aud_graph_rendering, !aud_animations
    task aud_unit_tests "Component / styling unit tests" {
      effort 2d
      allocate team
    }
    task aud_behavior_tests "BDD scenarios — 'audience sees N1 land, transition agreed, etc.'" {
      effort 2d
      allocate team
    }
    task aud_playwright_e2e "Playwright E2E tests for the audience page" {
      effort 2d
      allocate team
      note "Drive the actual audience URL in a browser, simulating live event arrivals."
    }
    task aud_visual_regression "Visual-regression tests (screenshots) for state styling" {
      effort 2d
      allocate team
      depends !aud_playwright_e2e
    }
    task aud_obs_render_smoke "Smoke test rendering at OBS-source dimensions" {
      effort 1d
      allocate team
      depends !!aud_obs_integration
    }
  }
}
